# task02-02

Schedule from MS Project, 2023-03-01 to 2023-09-15, costs in ₽.

## Calendars

- Стандартный: Mon-Fri 09:00-13:00, 14:00-18:00; Sat-Sun off. Exceptions (off unless hours are given): 2023-03-08 (Международный женский день), 2023-05-01 (День Труда), 2023-05-08 to 2023-05-09 (День Победы), 2023-06-12 (День России).

## Resources

| Resource | Group | Rate | Cost per use |
| --- | --- | --- | --- |
| Ведущий программист | Программирование | 10 | 100 |
| Программист 1 | Программирование | 7 | 50 |
| Программист 2 | Программирование | 7 | 50 |
| Программист 3 | Программирование | 7 | 50 |
| Программист 4 | Программирование | 7 | 50 |
| Системный аналитик | Анализ | 20 | 300 |
| Художник дизайнер | Дизайн | 8 | 70 |
| Технический писатель | Документация | 5 | 20 |
| Web-дизайнер | Internet | 7 | 50 |
| 3D Аниматор | Дизайн | 8 | 70 |
| Мультимедиа корреспондент | М-Медиа | 3 | 20 |
| Наборщик данных 1 | Ввод данных | 2 | 10 |
| Наборщик данных 2 | Ввод данных | 2 | 10 |
| Наборщик данных 3 | Ввод данных | 2 | 10 |
| Наборщик данных 4 | Ввод данных | 2 | 10 |
| Наборщик данных 5 | Ввод данных | 2 | 10 |
| Сервер | Сервер | 2 |  |

## Schedule

| ID | WBS | Task | Type | Duration | Start | Finish | Predecessors | Total slack | Free slack | Resources | Work | Cost |
| --- | --- | --- | --- | --- | --- | --- | --- | --- | --- | --- | --- | --- |
| 1 | 1 | **Проект** |  | 138d | 2023-03-01 | 2023-09-15 |  | 0d |  |  | 9377h | 48,094 |
| 2 | 1.1 | Начало проекта | milestone | 1d | 2023-03-01 | 2023-03-01 |  | 69d | 0d |  |  |  |
| 3 | 1.2 | **Создание интерфейса** |  | 109d | 2023-03-02 | 2023-08-08 | 2 | 0d |  |  | 560h | 5,550 |
| 4 | 1.2.1 | **Разработка дизайна интерфейса** |  | 25d | 2023-03-02 | 2023-04-06 |  | 69d | 0d |  | 320h | 2,770 |
| 5 | 1.2.1.1 | Разработка 2D графических интерфейсов |  | 3w | 2023-03-02 | 2023-03-23 |  | 69d | 0d | Художник дизайнер | 120h | 1,030 |
| 6 | 1.2.1.2 | Разработка 3D графических интерфейсов |  | 2w | 2023-03-02 | 2023-03-16 | 5SS | 69d | 0d | 3D Аниматор | 80h | 710 |
| 7 | 1.2.1.3 | Создание заставки |  | 3w | 2023-03-17 | 2023-04-06 | 6 | 69d |  | 3D Аниматор | 120h | 1,030 |
| 8 | 1.2.2 | Программирование интерфейса |  | 3w | 2023-07-19 | 2023-08-08 | 4, 13 | 0d |  | Программист 3; Программист 4 | 240h | 1,780 |
| 9 | 1.3 | **Простроение базы объектов** |  | 85d | 2023-03-01 | 2023-07-04 |  | 53d |  | Сервер | 5729h | 15,548 |
| 10 | 1.3.1 | Анализ и построение структуры базы объектов |  | 2w | 2023-03-01 | 2023-03-15 |  | 53d | 0d | Системный аналитик | 80h | 1,900 |
| 11 | 1.3.2 | Программирование средств обработки базы объектов |  | 3w | 2023-03-16 | 2023-04-05 | 10 | 53d | 0d | Программист 3; Программист 4 | 240h | 1,780 |
| 12 | 1.3.3 | Наполнение базы объектов |  | 12w | 2023-04-06 | 2023-07-04 | 11 | 53d |  | Наборщик данных 1; Наборщик данных 2; Наборщик данных 3; Наборщик данных 4; Наборщик данных 5 | 2400h | 4,850 |
| 13 | 1.4 | **Создание ядра GIS** |  | 95d | 2023-03-01 | 2023-07-18 |  | 0d |  |  | 1880h | 18,680 |
| 14 | 1.4.1 | Анализ и проектирование ядра |  | 3w | 2023-03-01 | 2023-03-22 |  | 0d |  | Ведущий программист; Системный аналитик | 240h | 4,000 |
| 15 | 1.4.2 | Создание модели ядра |  | 5w | 2023-03-23 | 2023-04-26 | 14 | 0d |  | Ведущий программист; Программист 1 | 400h | 3,550 |
| 16 | 1.4.3 | Тестирование модели ядра |  | 1w | 2023-04-27 | 2023-05-04 | 15 | 0d |  | Программист 1 | 40h | 330 |
| 17 | 1.4.4 | Создание рабочей версии ядра |  | 10w | 2023-05-05 | 2023-07-18 | 16 | 0d |  | Ведущий программист; Программист 1; Программист 2 | 1200h | 9,800 |
| 18 | 1.5 | Создание мультимедиа – наполнения |  | 6w | 2023-04-07 | 2023-05-23 | 4 | 82d |  | Мультимедиа корреспондент | 240h | 740 |
| 19 | 1.6 | Создание справочной системы |  | 2w | 2023-08-09 | 2023-08-22 | 8 | 18d |  | Технический писатель | 80h | 420 |
| 20 | 1.7 | **Создание руководства пользователя** |  | 17d | 2023-07-26 | 2023-08-17 | 8FS-10d | 0d |  |  | 160h | 1,010 |
| 21 | 1.7.1 | Разработка дизайна руководства |  | 1w | 2023-07-26 | 2023-08-01 |  | 0d |  | Художник дизайнер | 40h | 390 |
| 22 | 1.7.2 | Написание руководства пользователя |  | 3w | 2023-07-28 | 2023-08-17 | 21SS+2d | 0d |  | Технический писатель | 120h | 620 |
| 23 | 1.8 | **Создание web – сайта и поддержка** |  | 21d | 2023-07-28 | 2023-08-25 |  | 0d |  |  | 248h | 2,106 |
| 24 | 1.8.1 | Разработка структуры сайта |  | 1d | 2023-07-28 | 2023-07-28 | 22SS | 0d |  | Web-дизайнер | 8h | 106 |
| 25 | 1.8.2 | Разработка дизайна сайта |  | 1w | 2023-07-31 | 2023-08-04 | 24 | 0d |  | 3D Аниматор; Web-дизайнер; Художник дизайнер | 120h | 1,110 |
| 26 | 1.8.3 | Наполнение сайта |  | 3w | 2023-08-07 | 2023-08-25 | 25 | 0d |  | Web-дизайнер | 120h | 890 |
| 27 | 1.9 | Тестирование сайта |  | 4w | 2023-08-21 | 2023-09-15 | 23FS-1w | 0d |  | Ведущий программист; Программист 1; Программист 2 | 480h | 4,040 |
| 28 | 1.10 | Сдача сайта в эксплуатацию | milestone | 0w | 2023-09-15 | 2023-09-15 | 27 | 0d |  |  |  |  |

Notes:
- 1: Команда разработчиков из 16 человек занимается созданием карты города на основе собственного модуля отображения. Проект должен быть завершен в течение 6 месяцев. Бюджет проекта: 50 000 рублей. / .
