# task03-02

Schedule from MS Project, 2023-03-01 to 2023-09-22, costs in ₽.

## Calendars

- Стандартный: Mon-Fri 09:00-13:00, 14:00-18:00; Sat-Sun off. Exceptions (off unless hours are given): 2023-03-08 (Международный женский день), 2023-05-01 (День Труда), 2023-05-08 to 2023-05-09 (День Победы), 2023-06-12 (День России).

## Resources

| Resource | Group | Rate | Cost per use |
| --- | --- | --- | --- |
| Ведущий программист | Программирование | 10 | 100 |
| Программист 1 | Программирование | 7 | 50 |
| Программист 2 | Программирование | 7 | 50 |
| Программист 3 | Программирование | 7 | 50 |
| Программист 4 | Программирование | 7 | 50 |
| Системный аналитик | Анализ | 20 | 300 |
| Художник дизайнер | Дизайн | 8 | 70 |
| Технический писатель | Документация | 5 | 20 |
| Web-дизайнер | Internet | 7 | 50 |
| 3D Аниматор | Дизайн | 8 | 70 |
| Мультимедиа корреспондент | М-Медиа | 3 | 20 |
| Наборщик данных 1 | Ввод данных | 2 | 10 |
| Наборщик данных 2 | Ввод данных | 2 | 10 |
| Наборщик данных 3 | Ввод данных | 2 | 10 |
| Наборщик данных 4 | Ввод данных | 2 | 10 |
| Наборщик данных 5 | Ввод данных | 2 | 10 |
| Сервер | Сервер | 2 |  |

## Schedule

| ID | WBS | Task | Type | Duration | Start | Finish | Total slack | Free slack | Constraint | Resources | Work | Cost |
| --- | --- | --- | --- | --- | --- | --- | --- | --- | --- | --- | --- | --- |
| 1 | 1 | **Проект** |  | 142.38d | 2023-03-01 09:00 | 2023-09-22 12:00 | 0d |  |  |  | 9566h | 67,373 |
| 2 | 1.1 | **Совещание** |  | 135.12d | 2023-03-01 09:00 | 2023-09-13 10:00 | 0d |  |  |  | 195h | 19,291 |
| 3 | 1.1.1 | Совещание 1 | manual | 1h | 2023-03-01 09:00 | 2023-03-01 10:00 |  |  | start no earlier than 2023-03-01 09:00 | 3D Аниматор; Web-дизайнер; Ведущий программист; Мультимедиа корреспондент; Системный аналитик; Технический писатель; Художник дизайнер | 7h | 691 |
| 4 | 1.1.2 | Совещание 3 | manual | 1h | 2023-03-15 09:00 | 2023-03-15 10:00 |  |  | start no earlier than 2023-03-15 09:00 | 3D Аниматор; Web-дизайнер; Ведущий программист; Мультимедиа корреспондент; Системный аналитик; Технический писатель; Художник дизайнер | 7h | 691 |
| 5 | 1.1.3 | Совещание 4 | manual | 1h | 2023-03-22 09:00 | 2023-03-22 10:00 |  |  | start no earlier than 2023-03-22 09:00 | 3D Аниматор; Web-дизайнер; Ведущий программист; Мультимедиа корреспондент; Системный аналитик; Технический писатель; Художник дизайнер | 7h | 691 |
| 6 | 1.1.4 | Совещание 5 | manual | 1h | 2023-03-29 09:00 | 2023-03-29 10:00 |  |  | start no earlier than 2023-03-29 09:00 | 3D Аниматор; Web-дизайнер; Ведущий программист; Мультимедиа корреспондент; Системный аналитик; Технический писатель; Художник дизайнер | 7h | 691 |
| 7 | 1.1.5 | Совещание 6 | manual | 1h | 2023-04-05 09:00 | 2023-04-05 10:00 |  |  | start no earlier than 2023-04-05 09:00 | 3D Аниматор; Web-дизайнер; Ведущий программист; Мультимедиа корреспондент; Системный аналитик; Технический писатель; Художник дизайнер | 7h | 691 |
| 8 | 1.1.6 | Совещание 7 | manual | 1h | 2023-04-12 09:00 | 2023-04-12 10:00 |  |  | start no earlier than 2023-04-12 09:00 | 3D Аниматор; Web-дизайнер; Ведущий программист; Мультимедиа корреспондент; Системный аналитик; Технический писатель; Художник дизайнер | 7h | 691 |
| 9 | 1.1.7 | Совещание 8 | manual | 1h | 2023-04-19 09:00 | 2023-04-19 10:00 |  |  | start no earlier than 2023-04-19 09:00 | 3D Аниматор; Web-дизайнер; Ведущий программист; Мультимедиа корреспондент; Системный аналитик; Технический писатель; Художник дизайнер | 7h | 691 |
| 10 | 1.1.8 | Совещание 9 | manual | 1h | 2023-04-26 09:00 | 2023-04-26 10:00 |  |  | start no earlier than 2023-04-26 09:00 | 3D Аниматор; Web-дизайнер; Ведущий программист; Мультимедиа корреспондент; Системный аналитик; Технический писатель; Художник дизайнер | 7h | 691 |
| 11 | 1.1.9 | Совещание 10 | manual | 1h | 2023-05-03 09:00 | 2023-05-03 10:00 |  |  | start no earlier than 2023-05-03 09:00 | 3D Аниматор; Web-дизайнер; Ведущий программист; Мультимедиа корреспондент; Системный аналитик; Технический писатель; Художник дизайнер | 7h | 691 |
| 12 | 1.1.10 | Совещание 11 | manual | 1h | 2023-05-10 09:00 | 2023-05-10 10:00 |  |  | start no earlier than 2023-05-10 09:00 | 3D Аниматор; Web-дизайнер; Ведущий программист; Мультимедиа корреспондент; Системный аналитик; Технический писатель; Художник дизайнер | 7h | 691 |
| 13 | 1.1.11 | Совещание 12 | manual | 1h | 2023-05-17 09:00 | 2023-05-17 10:00 |  |  | start no earlier than 2023-05-17 09:00 | 3D Аниматор; Web-дизайнер; Ведущий программист; Мультимедиа корреспондент; Системный аналитик; Технический писатель; Художник дизайнер | 7h | 691 |
| 14 | 1.1.12 | Совещание 13 | manual | 1h | 2023-05-24 09:00 | 2023-05-24 10:00 |  |  | start no earlier than 2023-05-24 09:00 | 3D Аниматор; Web-дизайнер; Ведущий программист; Мультимедиа корреспондент; Системный аналитик; Технический писатель; Художник дизайнер | 7h | 691 |
| 15 | 1.1.13 | Совещание 14 | manual | 1h | 2023-05-31 09:00 | 2023-05-31 10:00 |  |  | start no earlier than 2023-05-31 09:00 | 3D Аниматор; Web-дизайнер; Ведущий программист; Мультимедиа корреспондент; Системный аналитик; Технический писатель; Художник дизайнер | 7h | 691 |
| 16 | 1.1.14 | Совещание 15 | manual | 1h | 2023-06-07 09:00 | 2023-06-07 10:00 |  |  | start no earlier than 2023-06-07 09:00 | 3D Аниматор; Web-дизайнер; Ведущий программист; Мультимедиа корреспондент; Системный аналитик; Технический писатель; Художник дизайнер | 7h | 691 |
| 17 | 1.1.15 | Совещание 16 | manual | 1h | 2023-06-14 09:00 | 2023-06-14 10:00 |  |  | start no earlier than 2023-06-14 09:00 | 3D Аниматор; Web-дизайнер; Ведущий программист; Мультимедиа корреспондент; Системный аналитик; Технический писатель; Художник дизайнер | 7h | 691 |
| 18 | 1.1.16 | Совещание 17 | manual | 1h | 2023-06-21 09:00 | 2023-06-21 10:00 |  |  | start no earlier than 2023-06-21 09:00 | 3D Аниматор; Web-дизайнер; Ведущий программист; Мультимедиа корреспондент; Системный аналитик; Технический писатель; Художник дизайнер | 7h | 691 |
| 19 | 1.1.17 | Совещание 18 | manual | 1h | 2023-06-28 09:00 | 2023-06-28 10:00 |  |  | start no earlier than 2023-06-28 09:00 | 3D Аниматор; Web-дизайнер; Ведущий программист; Мультимедиа корреспондент; Системный аналитик; Технический писатель; Художник дизайнер | 7h | 691 |
| 20 | 1.1.18 | Совещание 19 | manual | 1h | 2023-07-05 09:00 | 2023-07-05 10:00 |  |  | start no earlier than 2023-07-05 09:00 | 3D Аниматор; Web-дизайнер; Ведущий программист; Мультимедиа корреспондент; Системный аналитик; Технический писатель; Художник дизайнер | 7h | 691 |
| 21 | 1.1.19 | Совещание 20 | manual | 1h | 2023-07-12 09:00 | 2023-07-12 10:00 |  |  | start no earlier than 2023-07-12 09:00 | 3D Аниматор; Web-дизайнер; Ведущий программист; Мультимедиа корреспондент; Системный аналитик; Технический писатель; Художник дизайнер | 7h | 691 |
| 22 | 1.1.20 | Совещание 21 | manual | 1h | 2023-07-19 09:00 | 2023-07-19 10:00 |  |  | start no earlier than 2023-07-19 09:00 | 3D Аниматор; Web-дизайнер; Ведущий программист; Мультимедиа корреспондент; Системный аналитик; Технический писатель; Художник дизайнер | 7h | 691 |
| 23 | 1.1.21 | Совещание 22 | manual | 1h | 2023-07-26 09:00 | 2023-07-26 10:00 |  |  | start no earlier than 2023-07-26 09:00 | 3D Аниматор; Web-дизайнер; Ведущий программист; Мультимедиа корреспондент; Системный аналитик; Технический писатель; Художник дизайнер | 7h | 691 |
| 24 | 1.1.22 | Совещание 23 | manual | 1h | 2023-08-02 09:00 | 2023-08-02 10:00 |  |  | start no earlier than 2023-08-02 09:00 | 3D Аниматор; Ведущий программист; Мультимедиа корреспондент; Системный аналитик; Технический писатель; Художник дизайнер | 6h | 634 |
| 25 | 1.1.23 | Совещание 24 | manual | 1h | 2023-08-09 09:00 | 2023-08-09 10:00 |  |  | start no earlier than 2023-08-09 09:00 | 3D Аниматор; Web-дизайнер; Ведущий программист; Мультимедиа корреспондент; Системный аналитик; Технический писатель; Художник дизайнер | 7h | 691 |
| 26 | 1.1.24 | Совещание 25 | manual | 1h | 2023-08-16 09:00 | 2023-08-16 10:00 |  |  | start no earlier than 2023-08-16 09:00 | 3D Аниматор; Web-дизайнер; Ведущий программист; Мультимедиа корреспондент; Системный аналитик; Технический писатель; Художник дизайнер | 7h | 691 |
| 27 | 1.1.25 | Совещание 26 | manual | 1h | 2023-08-23 09:00 | 2023-08-23 10:00 |  |  | start no earlier than 2023-08-23 09:00 | 3D Аниматор; Web-дизайнер; Ведущий программист; Мультимедиа корреспондент; Системный аналитик; Технический писатель; Художник дизайнер | 7h | 691 |
| 28 | 1.1.26 | Совещание 27 | manual | 1h | 2023-08-30 09:00 | 2023-08-30 10:00 |  |  | start no earlier than 2023-08-30 09:00 | 3D Аниматор; Web-дизайнер; Ведущий программист; Мультимедиа корреспондент; Системный аналитик; Технический писатель; Художник дизайнер | 7h | 691 |
| 29 | 1.1.27 | Совещание 28 | manual | 1h | 2023-09-06 09:00 | 2023-09-06 10:00 |  |  | start no earlier than 2023-09-06 09:00 | 3D Аниматор; Web-дизайнер; Ведущий программист; Мультимедиа корреспондент; Системный аналитик; Технический писатель; Художник дизайнер | 7h | 691 |
| 30 | 1.1.28 | Совещание 29 | manual | 1h | 2023-09-13 09:00 | 2023-09-13 10:00 |  |  | start no earlier than 2023-09-13 09:00 | 3D Аниматор; Web-дизайнер; Ведущий программист; Мультимедиа корреспондент; Системный аналитик; Технический писатель; Художник дизайнер | 7h | 691 |
| 31 | 1.2 | Начало проекта | milestone | 1d | 2023-03-01 09:00 | 2023-03-01 18:00 | 70.88d | 0d |  |  |  |  |

Notes:
- 1: Команда разработчиков из 16 человек занимается созданием карты города на основе собственного модуля отображения. Проект должен быть завершен в течение 6 месяцев. Бюджет проекта: 50 000 рублей. / .

| ID | WBS | Task | Duration | Start | Finish | Predecessors | Total slack | Free slack | Resources | Work | Cost |
| --- | --- | --- | --- | --- | --- | --- | --- | --- | --- | --- | --- |
| 32 | 1.3 | **Создание интерфейса** | 111.38d | 2023-03-02 09:00 | 2023-08-11 12:00 | 31 | 0d |  |  | 560h | 5,550 |
| 33 | 1.3.1 | **Разработка дизайна интерфейса** | 25.5d | 2023-03-02 09:00 | 2023-04-07 13:00 |  | 70.88d | 0d |  | 320h | 2,770 |
| 34 | 1.3.1.1 | Разработка 2D графических интерфейсов | 3w | 2023-03-02 09:00 | 2023-03-24 11:00 |  | 70.88d | 0d | Художник дизайнер | 120h | 1,030 |
| 35 | 1.3.1.2 | Разработка 3D графических интерфейсов | 2w | 2023-03-02 09:00 | 2023-03-17 10:00 | 34SS | 70.88d | 0d | 3D Аниматор | 80h | 710 |
| 36 | 1.3.1.3 | Создание заставки | 3w | 2023-03-17 10:00 | 2023-04-07 13:00 | 35 | 70.88d | 69d | 3D Аниматор | 120h | 1,030 |
| 37 | 1.3.2 | Программирование интерфейса | 3w | 2023-07-21 12:00 | 2023-08-11 12:00 | 33, 42 | 0d |  | Программист 3; Программист 4 | 240h | 1,780 |
| 38 | 1.4 | **Простроение базы объектов** | 85.25d | 2023-03-23 12:00 | 2023-07-26 15:00 |  | 41.75d |  | Сервер | 5723h | 15,536 |
| 39 | 1.4.1 | Анализ и построение структуры базы объектов | 2w | 2023-03-23 12:00 | 2023-04-06 15:00 |  | 41.75d | 0d | Системный аналитик | 80h | 1,900 |
| 40 | 1.4.2 | Программирование средств обработки базы объектов | 3w | 2023-04-06 15:00 | 2023-04-27 15:00 | 39 | 41.75d | 0d | Программист 3; Программист 4 | 240h | 1,780 |
| 41 | 1.4.3 | Наполнение базы объектов | 12w | 2023-04-27 15:00 | 2023-07-26 15:00 | 40 | 41.75d |  | Наборщик данных 1; Наборщик данных 2; Наборщик данных 3; Наборщик данных 4; Наборщик данных 5 | 2400h | 4,850 |
| 42 | 1.5 | **Создание ядра GIS** | 97.25d | 2023-03-01 10:00 | 2023-07-21 12:00 |  | 0d |  |  | 1880h | 18,680 |
| 43 | 1.5.1 | Анализ и проектирование ядра | 3w | 2023-03-01 10:00 | 2023-03-23 12:00 |  | 0d |  | Ведущий программист; Системный аналитик | 240h | 4,000 |
| 44 | 1.5.2 | Создание модели ядра | 5.12w | 2023-03-23 12:00 | 2023-04-27 18:00 | 43 | 0d |  | Ведущий программист; Программист 1 | 400h | 3,550 |
| 45 | 1.5.3 | Тестирование модели ядра | 1w | 2023-04-28 09:00 | 2023-05-05 18:00 | 44 | 0d |  | Программист 1 | 40h | 330 |
| 46 | 1.5.4 | Создание рабочей версии ядра | 10.28w | 2023-05-10 09:00 | 2023-07-21 12:00 | 45 | 0d |  | Ведущий программист; Программист 1; Программист 2 | 1200h | 9,800 |
| 47 | 1.6 | Создание мультимедиа – наполнения | 6w | 2023-04-07 14:00 | 2023-05-25 12:00 | 33 | 85d | 81d | Мультимедиа корреспондент | 240h | 740 |
| 48 | 1.7 | Создание справочной системы | 2w | 2023-08-22 16:00 | 2023-09-05 18:00 | 37 | 12.38d | 17d | Технический писатель | 80h | 420 |
| 49 | 1.8 | **Создание руководства пользователя** | 17.38d | 2023-07-28 12:00 | 2023-08-22 16:00 | 37FS-10d | 0d |  |  | 160h | 1,010 |
| 50 | 1.8.1 | Разработка дизайна руководства | 1w | 2023-07-28 12:00 | 2023-08-04 13:00 |  | 0d |  | Художник дизайнер | 40h | 390 |
| 51 | 1.8.2 | Написание руководства пользователя | 3w | 2023-08-01 12:00 | 2023-08-22 16:00 | 50SS+2d | 0d |  | Технический писатель | 120h | 620 |
| 52 | 1.9 | **Создание web – сайта и поддержка** | 23.62d | 2023-08-01 12:00 | 2023-09-01 18:00 |  | 0d |  |  | 248h | 2,106 |
| 53 | 1.9.1 | Разработка структуры сайта | 1d | 2023-08-01 12:00 | 2023-08-02 12:00 | 51SS | 0d |  | Web-дизайнер | 8h | 106 |
| 54 | 1.9.2 | Разработка дизайна сайта | 1.45w | 2023-08-02 12:00 | 2023-08-11 15:00 | 53 | 0d |  | 3D Аниматор; Web-дизайнер; Художник дизайнер | 120h | 1,110 |
| 55 | 1.9.3 | Наполнение сайта | 3w | 2023-08-11 15:00 | 2023-09-01 18:00 | 54 | 0d |  | Web-дизайнер | 120h | 890 |
| 56 | 1.10 | Тестирование сайта | 4.08w | 2023-08-24 09:00 | 2023-09-21 12:00 | 52FS-7d | 0d |  | Ведущий программист; Программист 1; Программист 2 | 480h | 4,040 |
| 57 | 1.11 | Сдача сайта в эксплуатацию | 1d | 2023-09-21 12:00 | 2023-09-22 12:00 | 56 | 0d |  |  |  |  |
